# 0000 Назва ЗЗ вер.2

Schedule from MS Project, 2025-12-26 to 2026-02-02, status date 2026-01-06, A marks actual dates.

## Calendars

- Стандартный: Mon-Fri 09:00-13:00, 14:00-18:00; Sat-Sun off.

## Resources

| Resource |
| --- |
| Інженер ВТК |
| Комірник |
| Гулієва |
| Земцова |
| Довгаль |
| Клименко |
| Погребний |
| Рябовол |
| Сметанкін |
| Целуйко |
| Шуліка |
| Ясенов |
| Монтажник 1 |
| Монтажник 2 |
| Монтажник 3 |
| Монтажник 4 |
| Монтажник 5 |
| Монтажник 6 |
| Монтажник 7 |
| Монтажник 8 |
| Монтажник 9 |

## Schedule

| ID | WBS | Task | Type | Duration | Start | Finish | Predecessors | Complete | Remaining | Baseline start | Baseline finish | Baseline duration | Baseline 1 start | Baseline 1 finish | Total slack | Free slack | Constraint | Resources | Work | Actual work |
| --- | --- | --- | --- | --- | --- | --- | --- | --- | --- | --- | --- | --- | --- | --- | --- | --- | --- | --- | --- | --- |
| 1 | 1 | **1269_Юрпак** |  | 26.5d | 2025-12-26 A | 2026-02-02 |  | 75% | 6.7d | 2025-12-26 | 2026-01-30 | 25d | 2024-01-09 | 2024-02-14 | 106.5d |  |  |  | 36h | 32h |
| 2 | 1.1 | **1269-1** |  | 26.5d | 2025-12-26 A | 2026-02-02 |  | 35% | 17.15d | 2025-12-26 | 2026-01-14 | 13.2d | 2024-01-09 | 2024-02-07 | 106.5d |  |  |  | 12h | 8h |
| 3 | 1.1.1 | КД |  | 2d | 2025-12-26 A | 2026-01-06 A |  | 100% |  | 2025-12-26 | 2026-01-06 | 2d |  |  |  |  |  |  |  |  |
| 4 | 1.1.2 | Комплектація |  | 1d | 2026-01-22 A | 2026-01-22 A | 3 | 100% |  | 2026-01-06 | 2026-01-06 | 0.5d | 2024-01-12 | 2024-01-15 |  |  | start no earlier than 2026-01-17 | Комірник | 8h | 8h |
| 5 | 1.1.3 | Виробництво |  | 5d | 2026-01-26 | 2026-01-30 | 4 |  |  | 2026-01-06 | 2026-01-13 | 5d | 2024-01-16 | 2024-02-05 | 106.5d | 0d | start no earlier than 2026-01-25 |  |  |  |
| 6 | 1.1.4 | ВТК |  | 0.5d | 2026-02-02 | 2026-02-02 | 5 |  |  | 2026-01-13 | 2026-01-14 | 0.5d | 2024-02-06 | 2024-02-06 | 106.5d | 0d | start no earlier than 2026-01-14 | Інженер ВТК | 4h |  |
| 7 | 1.2 | **1269-2** |  | 13d | 2026-01-06 A | 2026-01-22 A |  | 100% |  | 2026-01-06 | 2026-01-08 | 2.5d | 2024-01-09 | 2024-02-14 |  |  |  |  | 8h | 8h |
| 8 | 1.2.1 | КД |  | 5d | 2026-01-06 A | 2026-01-12 A |  | 100% |  | 2026-01-06 | 2026-01-07 | 2d |  |  |  |  | start no earlier than 2026-01-05 |  |  |  |
| 9 | 1.2.2 | Комплектація |  | 1d | 2026-01-22 A | 2026-01-22 A | 8 | 100% |  | 2026-01-08 | 2026-01-08 | 0.5d | 2024-01-15 | 2024-01-15 |  |  | start no earlier than 2026-01-17 | Комірник | 8h | 8h |
| 10 | 1.3 | **1269-3** |  | 13d | 2026-01-06 A | 2026-01-22 A |  | 100% |  | 2026-01-06 | 2026-01-08 | 2.5d | 2024-01-09 | 2024-02-14 |  |  |  |  | 8h | 8h |
| 11 | 1.3.1 | КД |  | 5d | 2026-01-06 A | 2026-01-12 A |  | 100% |  | 2026-01-06 | 2026-01-07 | 2d |  |  |  |  | start no earlier than 2026-01-05 |  |  |  |
| 12 | 1.3.2 | Комплектація |  | 1d | 2026-01-22 A | 2026-01-22 A | 11 | 100% |  | 2026-01-08 | 2026-01-08 | 0.5d | 2024-01-15 | 2024-01-15 |  |  | start no earlier than 2026-01-17 | Комірник | 8h | 8h |
| 13 | 1.4 | **1269-4** |  | 13d | 2026-01-06 A | 2026-01-22 A |  | 100% |  | 2026-01-06 | 2026-01-06 | 0.65d | 2024-01-09 | 2024-02-14 |  |  |  |  | 8h | 8h |
| 14 | 1.4.1 | КД |  | 0.25d | 2026-01-06 A | 2026-01-06 A |  | 100% |  | 2026-01-06 | 2026-01-06 | 0.25d |  |  |  |  | start no earlier than 2026-01-05 |  |  |  |
| 15 | 1.4.2 | Комплектація |  | 1d | 2026-01-22 A | 2026-01-22 A | 14 | 100% |  | 2026-01-06 | 2026-01-06 | 0.15d | 2024-01-15 | 2024-01-15 |  |  | start no earlier than 2026-01-17 | Комірник | 8h | 8h |
| 16 | 2 | Відвантаження | milestone | 0d | 2026-02-02 | 2026-02-02 | 12, 9, 15, 6 |  |  | 2026-01-30 | 2026-01-30 | 0d |  |  | 106.5d |  | start no earlier than 2026-01-30 |  |  |  |

Notes:
- 2: Найменування: Шафа управління головним приводом та приводами намотування ФМ ВТ6
- 7: Найменування: Комплект обладнання для пульта керування ГП
- 10: Найменування: Комплект обладнання для пульта керування Намоткою
- 13: Найменування: Комплектація
